# Practica4_SII

How a schedule from ProjectLibre changed from version to version. A marks actual dates.

## Version 1 (saved 2026-03-30)

Note of the change: Feat: practica 4 acabada

| ID | WBS | Task | Duration | Start | Finish | Predecessors | Constraint |
| --- | --- | --- | --- | --- | --- | --- | --- |
| 1 | 1 | **Requisitos** | 52.99d | 2026-09-01 | 2026-11-13 |  |  |
| 2 |  | Recopilación de requisitos funcionales | 22.67d | 2026-09-01 | 2026-10-01 |  |  |
| 3 |  | Recopilación de requisitos no funcionales | 22.75d | 2026-09-01 | 2026-10-01 | 2SS |  |
| 4 |  | Documentación de requisitos | 10.83d | 2026-10-01 | 2026-10-19 | 3, 2 | start no earlier than 2026-10-01 |
| 5 |  | Validación de requisitos por el cliente | 19.41d | 2026-10-19 | 2026-11-13 | 4 | start no earlier than 2026-09-22 |
| 6 |  | Requisitos aprobados | 0d | 2026-11-13 | 2026-11-13 | 5 |  |
| 7 | 2 | **Diseño arquitectónico** | 57.44d | 2026-11-13 | 2027-02-09 | 5 | start no earlier than 2026-10-06 |
| 8 |  | Definición de tecnologías | 18.5d | 2026-11-13 | 2026-12-10 | 5 | start no earlier than 2026-10-06 |
| 9 |  | Diseño de arquitectura | 19.47d | 2026-12-10 | 2027-01-12 | 8 | start no earlier than 2026-10-29 |
| 10 |  | Interfaces | 19.47d | 2027-01-12 | 2027-02-09 | 9 | start no earlier than 2026-11-19 |
| 11 | 3 | **Diseño detallado** | 44.77d | 2027-02-15 | 2027-04-16 | 10 |  |
| 12 |  | Diseño de base de datos | 25d | 2027-02-15 | 2027-03-22 | 10FS+30h |  |
| 13 |  | Diagramas de clases y secuencia | 21.67d | 2027-02-15 | 2027-03-16 | 12SS |  |
| 14 |  | Definición de APIs | 9.17d | 2027-03-22 | 2027-04-02 | 12, 13 | start no earlier than 2026-12-18 |
| 15 |  | Diseño de interfaces / wireframes | 10.6d | 2027-04-02 | 2027-04-16 | 14 |  |
| 16 | 4 | **Implementación** | 146.5d | 2027-04-16 | 2027-11-09 | 15 |  |
| 17 |  | Configuración del entorno | 15d | 2027-04-16 | 2027-05-07 | 15 |  |
| 18 |  | Desarrollo de backend | 100d | 2027-05-07 | 2027-09-24 | 17 |  |
| 19 |  | Desarrollo de frontend | 80d | 2027-05-26 | 2027-09-15 | 18SS+100h |  |
| 20 |  | Integracion entre capas | 31.5d | 2027-09-24 | 2027-11-09 | 18, 19 |  |
| 21 | 5 | **Testeo de la aplicación** | 51.13d | 2027-11-09 | 2028-01-19 | 20 |  |
| 22 |  | Pruebas unitarias | 37.88d | 2027-11-09 | 2027-12-31 | 20 | start no earlier than 2027-03-18 |
| 23 |  | Pruebas de integración | 34.72d | 2027-11-10 | 2027-12-29 | 22SS+10h |  |
| 24 |  | Pruebas de rendimiento y seguridad | 34.72d | 2027-11-10 | 2027-12-29 | 22SS+10h | start no earlier than 2027-03-10 |
| 25 |  | Pruebas de aceptación con el usuario | 13.26d | 2027-12-31 | 2028-01-19 | 22, 23, 24 | start no earlier than 2027-04-07 |
| 26 |  | Tarea lista para entregar | 0d | 2028-01-19 | 2028-01-19 | 25 | start no earlier than 2027-03-30 |

## Version 2 (saved 2026-03-31)

Note of the change: Fix: se arregla diagrama de gauss

Last finish stays 2028-01-19.

Changed:

| ID | Task | Start | Finish | Duration |
| --- | --- | --- | --- | --- |
| 1 | **Requisitos** |  | 2026-11-13 → 2026-11-16 (+3d) | 52.99d → 53.02d |
| 5 | Validación de requisitos por el cliente |  | 2026-11-13 → 2026-11-16 (+3d) | 19.41d → 19.44d |
| 6 | Requisitos aprobados | 2026-11-13 → 2026-11-16 (+3d) | 2026-11-13 → 2026-11-16 (+3d) |  |
| 7 | **Diseño arquitectónico** | 2026-11-13 → 2026-11-16 (+3d) |  |  |
| 8 | Definición de tecnologías | 2026-11-13 → 2026-11-16 (+3d) |  |  |
